# FMPS Demo

Schedule from a web Gantt chart, 2025-10-27 to 2026-01-27.
Saturdays and Sundays are off

## Schedule

| ID | WBS | Task | Type | Duration | Start | Finish | Predecessors | Status |
| --- | --- | --- | --- | --- | --- | --- | --- | --- |
| 2 | 1 | Architect Design |  | 12d | 2025-10-27 | 2025-11-11 |  |  |
| 3 | 2 | Hardware architect design |  | 7d | 2025-11-06 | 2025-11-14 |  |  |
| 4 | 3 | Demo Show | fixed start | 2d | 2026-01-26 | 2026-01-27 |  |  |
| 5 | 4 | **Electric Design** |  | 35d | 2025-11-17 | 2026-01-02 | 3 | waiting |
| 6 | 4.1 | Schematic Design |  | 15d | 2025-11-17 | 2025-12-05 |  | waiting |
| 7 | 4.2 | Material Prepare |  | 25d | 2025-11-17 | 2025-12-19 |  | waiting |
| 8 | 4.3 | Layout |  | 5d | 2025-12-08 | 2025-12-12 | 6 | waiting |
| 9 | 4.4 | PCBA Build |  | 15d | 2025-12-15 | 2026-01-02 | 8 | waiting |
| 10 | 5 | **Mechanical Design** |  | 35d | 2025-11-17 | 2026-01-02 | 3 | waiting |
| 11 | 5.1 | ID |  | 10d | 2025-11-17 | 2025-11-28 |  | waiting |
| 12 | 5.2 | 3D Draw |  | 15d | 2025-12-01 | 2025-12-19 | 11 | waiting |
| 13 | 5.3 | 3D Print Prototype |  | 10d | 2025-12-22 | 2026-01-02 | 12 | waiting |
| 14 | 6 | **Firmware Design** |  | 53d | 2025-11-12 | 2026-01-23 | 2 | waiting |
| 15 | 6.1 | **FSK Generate & Sample Verification** |  | 20d | 2025-11-12 | 2025-12-09 |  | waiting |
| 16 | 6.1.1 | FSK generate & cop to power line |  | 10d | 2025-11-12 | 2025-11-25 |  | waiting |
| 17 | 6.1.2 | FSK signal sampling |  | 10d | 2025-11-26 | 2025-12-09 | 16 | waiting |
| 18 | 6.2 | RCD Protect |  | 5d | 2025-12-10 | 2025-12-16 | 15 | waiting |
| 19 | 6.3 | Fault Detection |  | 15d | 2025-12-17 | 2026-01-06 | 18 | waiting |
| 20 | 6.4 | Integration Develop & Test |  | 13d | 2026-01-07 | 2026-01-23 | 19 | waiting |
| 21 | 7 | **PLC Driver evaluate Ti AFE032** |  | 20d | 2025-11-10 | 2025-12-05 |  |  |
| 22 | 7.1 | Material purchuse |  | 8d | 2025-11-10 | 2025-11-19 |  |  |
| 23 | 7.2 | JLC PCB&PCBA Sample |  | 10d | 2025-11-13 | 2025-11-26 |  | waiting |
| 24 | 7.3 | Signal generate & sample |  | 7d | 2025-11-27 | 2025-12-05 | 23 | waiting |
| 25 | 8 | Power Unit Evaluate |  | 1d | 2025-10-27 | 2025-10-27 |  |  |
